# p1-a

Schedule from ProjectLibre, 2026-01-01 to 2026-03-31.

## Calendars

- Standard: Mon-Fri 08:00-12:00, 13:00-17:00; Sat-Sun off.

## Resources

| Resource | Rate | Notes |
| --- | --- | --- |
| Unassigned |  |  |
| Bea | 24.38 | A: Director/a Proxecto B: Analista C: Deseñador/a D: Programador/a Desenvolvemento E: Programador/a Probas |
| Xulia | 24.38 | A: Director/a Proxecto B: Analista C: Deseñador/a D: Programador/a Desenvolvemento E: Programador/a Probas |
| Xosé | 24.38 | A: Director/a Proxecto B: Analista C: Deseñador/a D: Programador/a Desenvolvemento E: Programador/a Probas |
| Ana | 24.38 | A: Director/a Proxecto B: Analista C: Deseñador/a D: Programador/a Desenvolvemento E: Programador/a Probas |

## Schedule

| ID | WBS | Task | Duration | Start | Finish | Predecessors | Baseline 1 start | Baseline 1 finish | Constraint | Resources |
| --- | --- | --- | --- | --- | --- | --- | --- | --- | --- | --- |
| 1 | 1 | **APLICACIÓN DE CONSULTA PARA LA F1** | 63.3d? | 2026-01-01 | 2026-03-31 |  | 2026-01-01 | 2026-03-31 |  |  |
| 2 | 1.1 | **INICIO Y PLANIFICACIÓN DEL PROYECTO** | 2.51d | 2026-01-01 | 2026-01-05 |  | 2026-01-01 | 2026-01-05 |  |  |
| 3 | 1.1.1 | Definición de objetivos y alcance | 1d | 2026-01-01 | 2026-01-01 |  | 2026-01-01 | 2026-01-01 |  | Bea |
| 4 | 1.1.2 | Asignación de roles | 0.75d | 2026-01-02 | 2026-01-02 | 3 | 2026-01-02 | 2026-01-02 |  | Bea |
| 5 | 1.1.3 | Elaboración del plan de trabajo | 0.25d | 2026-01-02 | 2026-01-02 | 4 | 2026-01-02 | 2026-01-02 |  | Bea |
| 6 | 1.1.4 | Aprobación del plan | 0.51d | 2026-01-05 | 2026-01-05 | 5 | 2026-01-05 | 2026-01-05 |  | Bea |
| 7 | 1.1.5 | Hito 1 Aprobación del proyecto | 0d | 2026-01-05 | 2026-01-05 | 6 | 2026-01-05 | 2026-01-05 |  |  |
| 8 | 1.2 | **ANÁLISIS DE REQUISITOS** | 2.88d | 2026-01-05 | 2026-01-08 |  | 2026-01-05 | 2026-01-08 |  |  |
| 9 | 1.2.1 | Revisión del alcance funcional | 0.5d | 2026-01-05 | 2026-01-06 | 6 | 2026-01-05 | 2026-01-06 |  | Bea; Xulia |
| 10 | 1.2.2 | Análisis de requisitos | 0.5d | 2026-01-06 | 2026-01-06 | 9 | 2026-01-06 | 2026-01-06 |  | Bea; Xulia |
| 11 | 1.2.3 | Identificación de transacciones principales | 0.38d | 2026-01-07 | 2026-01-07 | 10, 13 | 2026-01-07 | 2026-01-07 |  | Bea; Xulia |
| 12 | 1.2.4 | Modelado de casos de uso | 1d | 2026-01-07 | 2026-01-08 | 11 | 2026-01-07 | 2026-01-08 |  | Bea; Xulia |
| 13 | 1.2.5 | Validación de requisitos | 0.5d | 2026-01-06 | 2026-01-07 | 9, 10 | 2026-01-06 | 2026-01-07 |  | Bea; Xulia |
| 14 | 1.2.6 | Hito 2 Conocimiento de los requisitos | 0d | 2026-01-08 | 2026-01-08 | 12, 10 | 2026-01-08 | 2026-01-08 |  |  |
| 15 | 1.3 | **DISEÑO DEL SISTEMA Y DE LA BASE DE DATOS** | 22.67d | 2026-01-08 | 2026-02-10 |  | 2026-01-08 | 2026-02-10 |  |  |
| 16 | 1.3.1 | **Diseño de la base de datos** | 11.67d | 2026-01-08 | 2026-01-26 |  | 2026-01-08 | 2026-01-26 |  |  |
| 17 | 1.3.1.1 | elaboración del MER | 0.17d | 2026-01-08 | 2026-01-08 | 12 | 2026-01-08 | 2026-01-08 |  | Xosé [150%]; Bea [50%] |
| 18 | 1.3.1.2 | Elaboración del diccionario de datos | 1.33d | 2026-01-22 | 2026-01-23 | 17, 12, 23 | 2026-01-22 | 2026-01-23 | start no earlier than 1970-01-01 | Bea [50%]; Xosé [50%] |
| 19 | 1.3.1.3 | Conversión MER a MR | 1d | 2026-01-08 | 2026-01-09 | 17 | 2026-01-08 | 2026-01-09 | start no earlier than 1970-01-01 | Bea [50%] |
| 20 | 1.3.1.4 | Normalización a 3FN | 0.33d | 2026-01-23 | 2026-01-26 | 23, 19, 18 | 2026-01-23 | 2026-01-26 |  | Bea [50%] |
| 21 | 1.3.2 | **Diseño de implementacón** | 22.67d | 2026-01-08 | 2026-02-10 |  | 2026-01-08 | 2026-02-10 |  |  |
| 22 | 1.3.2.1 | Diseño de la seguridad | 2d | 2026-02-06 | 2026-02-10 | 24, 34, 51, 12, 37 | 2026-02-06 | 2026-02-10 |  | Bea |
| 23 | 1.3.2.2 | Diseño de tablas y vistas | 10d | 2026-01-08 | 2026-01-22 | 12 | 2026-01-08 | 2026-01-22 |  | Bea [50%]; Xosé [50%] |
| 24 | 1.3.2.3 | Diseño de las transacciones | 2d | 2026-01-26 | 2026-01-28 | 23, 20 | 2026-01-26 | 2026-01-28 |  | Bea [50%]; Xosé [50%] |

| ID | WBS | Task | Duration | Start | Finish | Predecessors | Baseline 1 start | Baseline 1 finish | Resources |
| --- | --- | --- | --- | --- | --- | --- | --- | --- | --- |
| 25 | 1.3.3 | **Diseño de la interfaz de usuario** | 5d | 2026-01-28 | 2026-02-04 |  | 2026-01-28 | 2026-02-04 |  |
| 26 | 1.3.3.1 | **Diseño de las ventanas** | 5d | 2026-01-28 | 2026-02-04 |  | 2026-01-28 | 2026-02-04 |  |
| 27 | 1.3.3.1.1 | Ventana de validación de usuario | 0.5d | 2026-01-28 | 2026-01-28 | 24, 19 | 2026-01-28 | 2026-01-28 | Bea; Xosé [50%] |
| 28 | 1.3.3.1.2 | Ventana de manager | 0.5d | 2026-01-28 | 2026-01-29 | 27, 19 | 2026-01-28 | 2026-01-29 | Bea; Xosé [50%] |
| 29 | 1.3.3.1.3 | Ventana de usuarios | 0.5d | 2026-01-29 | 2026-01-29 | 28, 19 | 2026-01-29 | 2026-01-29 | Bea; Xosé [50%] |
| 30 | 1.3.3.1.4 | Ventana de gran Premio | 0.5d | 2026-01-29 | 2026-01-30 | 29, 19 | 2026-01-29 | 2026-01-30 | Bea; Xosé [50%] |
| 31 | 1.3.3.1.5 | Ventana de piloto | 0.5d | 2026-01-30 | 2026-01-30 | 30, 19 | 2026-01-30 | 2026-01-30 | Bea; Xosé [50%] |
| 32 | 1.3.3.1.6 | Ventana de eqiupos | 0.5d | 2026-01-30 | 2026-02-02 | 31, 19 | 2026-01-30 | 2026-02-02 | Bea; Xosé [50%] |
| 33 | 1.3.3.1.7 | Ventana de trabajadores | 0.5d | 2026-02-02 | 2026-02-02 | 32, 19 | 2026-02-02 | 2026-02-02 | Bea; Xosé [50%] |
| 34 | 1.3.3.1.8 | Ventana de circuitos | 0.5d | 2026-02-02 | 2026-02-03 | 33, 19 | 2026-02-02 | 2026-02-03 | Bea; Xosé [50%] |
| 35 | 1.3.3.1.9 | Nueva ventana para la transaccion 1 | 0.5d | 2026-02-03 | 2026-02-03 | 34 | 2026-02-03 | 2026-02-03 | Bea; Xosé [50%] |
| 36 | 1.3.3.1.10 | Nueva ventana para la transaccion 2 | 0.5d | 2026-02-03 | 2026-02-04 | 35 | 2026-02-03 | 2026-02-04 | Bea; Xosé [50%] |
| 37 | 1.3.4 | Diseño del sistema de backup da base de datos | 2d | 2026-02-04 | 2026-02-06 | 36 | 2026-02-04 | 2026-02-06 | Bea; Xosé [50%] |
| 38 | 1.3.5 | Hito 3 Fin del diseño | 0d | 2026-02-06 | 2026-02-06 | 37, 26 | 2026-02-06 | 2026-02-06 |  |
| 39 | 1.4 | **IMPLEMENTACIÓN Y PRUEBAS UNITARIAS** | 41.17d? | 2026-01-08 | 2026-03-06 |  | 2026-01-08 | 2026-03-06 |  |
| 40 | 1.4.1 | **Configuración del entorno** | 7.33d | 2026-01-08 | 2026-01-19 |  | 2026-01-08 | 2026-01-19 |  |
| 41 | 1.4.1.1 | Levantar la base de datos en docker | 2d | 2026-01-08 | 2026-01-12 | 9, 12 | 2026-01-08 | 2026-01-12 | Xulia; Xosé [50%] |
| 42 | 1.4.1.2 | Configurar el entorno java21 | 2.67d | 2026-01-12 | 2026-01-15 | 41, 9 | 2026-01-12 | 2026-01-15 | Bea [50%]; Xosé [50%]; Xulia |
| 43 | 1.4.1.3 | Configurar dbeaver | 1.33d | 2026-01-15 | 2026-01-16 | 42, 41 | 2026-01-15 | 2026-01-16 | Bea [50%]; Xosé [50%]; Xulia |
| 44 | 1.4.1.4 | Conectar la base de datos con JDBC | 1.33d | 2026-01-16 | 2026-01-19 | 43, 42, 41 | 2026-01-16 | 2026-01-19 | Bea [50%]; Xosé [50%]; Xulia |
| 45 | 1.4.2 | **Implementación de la base de datos** | 19d | 2026-01-22 | 2026-02-18 |  | 2026-01-22 | 2026-02-18 |  |
| 46 | 1.4.2.1 | Implementar tablas | 4d | 2026-01-22 | 2026-01-28 | 44, 23 | 2026-01-22 | 2026-01-28 | Xosé [50%]; Xulia |
| 47 | 1.4.2.2 | Implementar vistas | 1d | 2026-01-28 | 2026-01-29 | 46 | 2026-01-28 | 2026-01-29 | Xosé [50%]; Xulia |
| 48 | 1.4.2.3 | **Elaboración de scripts** | 14d | 2026-01-29 | 2026-02-18 |  | 2026-01-29 | 2026-02-18 |  |
| 49 | 1.4.2.3.1 | Crear script para crear la base de datos | 2d | 2026-01-29 | 2026-02-02 | 47 | 2026-01-29 | 2026-02-02 | Xosé [50%]; Xulia |
| 50 | 1.4.2.3.2 | Crear scripts para borrado | 1d | 2026-02-02 | 2026-02-03 | 49, 47 | 2026-02-02 | 2026-02-03 | Xosé [50%]; Xulia |
| 51 | 1.4.2.3.3 | Crear scripts para cargar y actualizar datos | 2d | 2026-02-03 | 2026-02-05 | 50, 49, 47 | 2026-02-03 | 2026-02-05 | Xosé [50%]; Xulia |

| ID | WBS | Task | Duration | Start | Finish | Predecessors | Baseline 1 start | Baseline 1 finish | Resources |
| --- | --- | --- | --- | --- | --- | --- | --- | --- | --- |
| 52 | 1.4.2.3.4 | **Elaboración de transacciones y consultas** | 9d | 2026-02-05 | 2026-02-18 | 24 | 2026-02-05 | 2026-02-18 |  |
| 53 | 1.4.2.3.4.1 | Transacciones y consultas de usuarios | 1d | 2026-02-05 | 2026-02-06 | 51, 47, 24 | 2026-02-05 | 2026-02-06 | Xosé [50%]; Xulia [50%] |
| 54 | 1.4.2.3.4.2 | Transacciones y consultas de Grandes Premios | 1d | 2026-02-06 | 2026-02-09 | 53, 47, 24 | 2026-02-06 | 2026-02-09 | Xosé [50%]; Xulia [50%] |
| 55 | 1.4.2.3.4.3 | Transacciones y consultas de pilotos | 1d | 2026-02-09 | 2026-02-10 | 54, 47, 24 | 2026-02-09 | 2026-02-10 | Xosé [50%]; Xulia [50%] |
| 56 | 1.4.2.3.4.4 | Transacciones y consultas de equipos | 1d | 2026-02-10 | 2026-02-11 | 55, 47, 24 | 2026-02-10 | 2026-02-11 | Xosé [50%]; Xulia [50%] |
| 57 | 1.4.2.3.4.5 | Transacciones y consultas de trabajadores | 1d | 2026-02-11 | 2026-02-12 | 56, 47, 24 | 2026-02-11 | 2026-02-12 | Xosé [50%]; Xulia [50%] |
| 58 | 1.4.2.3.4.6 | Transacciones y consultas de sesiones | 1d | 2026-02-12 | 2026-02-13 | 57, 47, 24 | 2026-02-12 | 2026-02-13 | Xosé [50%]; Xulia [50%] |
| 59 | 1.4.2.3.4.7 | Transacciones y consultas de estadísticas | 1d | 2026-02-13 | 2026-02-16 | 58, 47, 24 | 2026-02-13 | 2026-02-16 | Xosé [50%]; Xulia [50%] |
| 60 | 1.4.2.3.4.8 | Transaccion 1 | 1d | 2026-02-16 | 2026-02-17 | 59 | 2026-02-16 | 2026-02-17 | Xosé [50%]; Xulia [50%] |
| 61 | 1.4.2.3.4.9 | Transaccion 2 | 1d | 2026-02-17 | 2026-02-18 | 60 | 2026-02-17 | 2026-02-18 | Xosé [50%]; Xulia [50%] |
| 62 | 1.4.3 | Implementación de la capa de aplicación | 3d | 2026-02-18 | 2026-02-23 | 61, 59, 47 | 2026-02-18 | 2026-02-23 | Xosé [50%]; Xulia |
| 63 | 1.4.4 | Sistema de backup da base de datos | 3d | 2026-02-25 | 2026-03-02 | 74, 62 | 2026-02-25 | 2026-03-02 | Xosé [50%]; Xulia [50%] |
| 64 | 1.4.5 | **Implementación de la interfaz gráfica** | 13d? | 2026-02-06 | 2026-02-25 |  | 2026-02-06 | 2026-02-25 |  |
| 65 | 1.4.5.1 | Ventana de validación de usuario | 1d | 2026-02-06 | 2026-02-09 | 51, 27, 37, 53 | 2026-02-06 | 2026-02-09 | Xosé [50%]; Xulia [50%] |
| 66 | 1.4.5.2 | Ventana de manager | 1d | 2026-02-09 | 2026-02-10 | 65, 28 | 2026-02-09 | 2026-02-10 | Xosé [50%]; Xulia [50%] |
| 67 | 1.4.5.3 | Ventana de usuarios | 1d | 2026-02-10 | 2026-02-11 | 66, 29 | 2026-02-10 | 2026-02-11 | Xosé [50%]; Xulia [50%] |
| 68 | 1.4.5.4 | Ventana de gran Premio | 1d | 2026-02-11 | 2026-02-12 | 67, 30 | 2026-02-11 | 2026-02-12 | Xosé [50%]; Xulia [50%] |
| 69 | 1.4.5.5 | Ventana de piloto | 1d | 2026-02-12 | 2026-02-13 | 68, 31 | 2026-02-12 | 2026-02-13 | Xosé [50%]; Xulia [50%] |
| 70 | 1.4.5.6 | Ventana de eqiupos | 1d | 2026-02-13 | 2026-02-16 | 69, 34 | 2026-02-13 | 2026-02-16 | Xosé [50%]; Xulia [50%] |
| 71 | 1.4.5.7 | Ventana de trabajadores | 1d | 2026-02-16 | 2026-02-17 | 70, 34 | 2026-02-16 | 2026-02-17 | Xosé [50%]; Xulia [50%] |
| 72 | 1.4.5.8 | Ventana de circuitos | 1d | 2026-02-17 | 2026-02-18 | 71, 34 | 2026-02-17 | 2026-02-18 | Xosé [50%]; Xulia [50%] |
| 73 | 1.4.5.9 | Nueva ventana para la transaccion 1 | 1d? | 2026-02-23 | 2026-02-24 | 72, 62 | 2026-02-23 | 2026-02-24 | Xosé [50%]; Xulia |
| 74 | 1.4.5.10 | Nueva ventana para la transaccion 2 | 1d? | 2026-02-24 | 2026-02-25 | 73 | 2026-02-24 | 2026-02-25 | Xosé; Xulia [50%] |
| 75 | 1.4.6 | Implementación de consultas en la aplicación | 4d | 2026-02-25 | 2026-03-03 | 72, 62, 74 | 2026-02-25 | 2026-03-03 | Xosé [50%]; Xulia [50%] |
| 76 | 1.4.7 | Mejora del sistema de seguridad de la base de datos | 1.5d | 2026-03-03 | 2026-03-04 | 75 | 2026-03-03 | 2026-03-04 | Xosé; Xulia |
| 77 | 1.4.8 | Depuración y optimización | 1.67d | 2026-03-04 | 2026-03-06 | 76, 75, 72, 62, 20 | 2026-03-04 | 2026-03-06 | Xosé; Xulia |
| 78 | 1.4.9 | Hito 4 Fin de la implementación | 0d | 2026-03-06 | 2026-03-06 | 77, 75, 72, 71, 70, 69, 68, 67, 66, 65 | 2026-03-06 | 2026-03-06 |  |

| ID | WBS | Task | Duration | Start | Finish | Predecessors | Baseline 1 start | Baseline 1 finish | Resources |
| --- | --- | --- | --- | --- | --- | --- | --- | --- | --- |
| 79 | 1.5 | **INTEGRACIÓN Y VALIDACIÓN** | 8.67d | 2026-03-06 | 2026-03-19 |  | 2026-03-06 | 2026-03-19 |  |
| 80 | 1.5.1 | **Pruebas unitarias de la implementación** | 2.67d | 2026-03-09 | 2026-03-12 |  | 2026-03-09 | 2026-03-12 |  |
| 81 | 1.5.1.1 | Pruebas de seguridad | 1d | 2026-03-11 | 2026-03-12 | 82, 83, 77, 75 | 2026-03-11 | 2026-03-12 | Bea |
| 82 | 1.5.1.2 | Pruebas de rendimiento | 1d | 2026-03-09 | 2026-03-10 | 85, 77, 75 | 2026-03-09 | 2026-03-10 | Bea |
| 83 | 1.5.1.3 | Pruebas de usabilidad | 0.67d | 2026-03-10 | 2026-03-11 | 82, 77, 75 | 2026-03-10 | 2026-03-11 | Bea |
| 84 | 1.5.2 | Pruebas de concurrencia y rollback de transacciones | 1d | 2026-03-12 | 2026-03-13 | 81, 77, 75 | 2026-03-12 | 2026-03-13 | Bea |
| 85 | 1.5.3 | Pruebas de integración completas | 1d | 2026-03-06 | 2026-03-09 | 77, 75 | 2026-03-06 | 2026-03-09 | Bea |
| 86 | 1.5.4 | Validación funcional del sistema | 4d | 2026-03-13 | 2026-03-19 | 84, 77 | 2026-03-13 | 2026-03-19 | Bea |
| 87 | 1.5.5 | Hito 5 Fase de testeo superada con éxito | 0d | 2026-03-19 | 2026-03-19 | 86 | 2026-03-19 | 2026-03-19 |  |
| 88 | 1.6 | **DOCUMENTACIÓN FINAL Y ENTREGA** | 12.08d? | 2026-03-13 | 2026-03-31 |  | 2026-03-13 | 2026-03-31 |  |
| 89 | 1.6.1 | Preparación del entorno final | 4d | 2026-03-16 | 2026-03-20 | 91, 77 | 2026-03-16 | 2026-03-20 | Xosé [50%]; Xulia [50%] |
| 90 | 1.6.2 | Migración de datos y carga inicial | 3d | 2026-03-20 | 2026-03-25 | 89 | 2026-03-20 | 2026-03-25 | Xosé [50%]; Xulia |
| 91 | 1.6.3 | Elaboración de documentación técnica | 1.67d | 2026-03-13 | 2026-03-16 | 84, 77, 75 | 2026-03-13 | 2026-03-16 | Xulia; Xosé |
| 92 | 1.6.4 | Revisión | 0.83d? | 2026-03-16 | 2026-03-17 | 91 | 2026-03-16 | 2026-03-17 | Ana; Xulia [10%]; Xosé [10%] |
| 93 | 1.6.5 | Elaboración documentación para el usuario | 3.75d | 2026-03-19 | 2026-03-24 | 91, 86 | 2026-03-19 | 2026-03-24 | Bea; Xosé [50%] |
| 94 | 1.6.6 | Revisión | 3.33d? | 2026-03-24 | 2026-03-30 | 93 | 2026-03-24 | 2026-03-30 | Ana; Xulia [10%]; Xosé [10%] |
| 95 | 1.6.7 | Entrega final y cierre del proyecto | 1d | 2026-03-30 | 2026-03-31 | 93, 91, 90, 86, 94, 92 | 2026-03-30 | 2026-03-31 | Bea |
| 96 | 1.6.8 | Hito 6 Proyecto finalizado listo para entregar | 0d | 2026-03-31 | 2026-03-31 | 95 | 2026-03-31 | 2026-03-31 |  |
